# HR Interview and Hire Schedule 8-2

Schedule from MS Project, 2019-07-05 to 2019-09-09, A marks actual dates.

## Calendars

- Standard: Mon-Fri 08:00-12:00, 13:00-17:00; Sat-Sun off.

## Resources

| Resource |
| --- |
| Mu Zheng - Hiring Manager |
| Keith Harris - HR Manager |
| Megan Sherman - Interviewer |

## Schedule

| ID | WBS | Task | Type | Duration | Start | Finish | Predecessors | Complete | Remaining | Baseline start | Baseline finish | Baseline duration | Total slack | Free slack | Resources | Work | Actual work |
| --- | --- | --- | --- | --- | --- | --- | --- | --- | --- | --- | --- | --- | --- | --- | --- | --- | --- |
| 1 | 1 | **HR Interview Plan** |  | 47d | 2019-07-05 A | 2019-09-09 |  | 1% | 46.61d | 2019-07-05 | 2019-09-09 | 47d | 0d |  |  | 1120h | 12h |
| 2 | 1.1 | **HR Interview Plan** |  | 47d | 2019-07-05 A | 2019-09-09 |  | 1% | 46.61d | 2019-07-05 | 2019-09-09 | 47d | 0d |  |  | 1120h | 12h |
| 3 | 1.1.1 | **Preinterview Phase** |  | 19d | 2019-07-05 | 2019-07-31 |  |  |  | 2019-07-05 | 2019-07-31 | 19d | 0.75d |  |  | 464h |  |
| 4 | 1.1.1.1 | Begin preinterview phase | milestone | 0d | 2019-07-05 | 2019-07-05 |  |  |  | 2019-07-05 | 2019-07-05 | 0d | 0.75d | 0d |  |  |  |
| 5 | 1.1.1.2 | Identify candidate requirements |  | 2d | 2019-07-05 | 2019-07-08 | 4 |  |  | 2019-07-05 | 2019-07-08 | 2d | 0.75d | 0d | Mu Zheng - Hiring Manager | 16h |  |
| 6 | 1.1.1.3 | Advertise position to internal and external candidates |  | 14ed | 2019-07-08 | 2019-07-22 | 5 |  |  | 2019-07-08 | 2019-07-22 | 14ed | 2.75d | 1.88d | Keith Harris - HR Manager | 336h |  |
| 7 | 1.1.1.4 | Assemble potential candidate applications and resumes |  | 7d | 2019-07-23 | 2019-07-31 | 6 |  |  | 2019-07-23 | 2019-07-31 | 7d | 0.75d | 0d | Keith Harris - HR Manager; Mu Zheng - Hiring Manager | 112h |  |
| 8 | 1.1.1.5 | Preinterview phase complete | milestone | 0d | 2019-07-31 | 2019-07-31 | 7 |  |  | 2019-07-31 | 2019-07-31 | 0d | 0.75d | 0d |  |  |  |
| 9 | 1.1.2 | **Candidate Interview Phase** |  | 13d | 2019-07-31 A | 2019-08-19 |  | 6% | 12.25d | 2019-07-31 | 2019-08-19 | 13d | 0d |  |  | 240h | 12h |
| 10 | 1.1.2.1 | Begin interview phase | milestone | 0d | 2019-07-31 | 2019-07-31 | 8 |  |  | 2019-07-31 | 2019-07-31 | 0d | 0.75d | 0d |  |  |  |
| 11 | 1.1.2.2 | Select candidates to interview |  | 3d | 2019-08-01 A | 2019-08-05 | 10 | 25% | 2.25d | 2019-08-01 | 2019-08-05 | 3d | 0d |  | Keith Harris - HR Manager; Mu Zheng - Hiring Manager | 48h | 12h |
| 12 | 1.1.2.3 | Prepare interview questions |  | 2d | 2019-08-06 | 2019-08-07 | 11 |  |  | 2019-08-06 | 2019-08-07 | 2d | 0d |  | Mu Zheng - Hiring Manager | 16h |  |
| 13 | 1.1.2.4 | Conduct interview(s) |  | 5d | 2019-08-08 | 2019-08-14 | 12 |  |  | 2019-08-08 | 2019-08-14 | 5d | 0d |  | Keith Harris - HR Manager; Mu Zheng - Hiring Manager; Megan Sherman - Interviewer | 120h |  |
| 14 | 1.1.2.5 | Document interview results |  | 2d | 2019-08-15 | 2019-08-16 | 13 |  |  | 2019-08-15 | 2019-08-16 | 2d | 0d |  | Keith Harris - HR Manager; Mu Zheng - Hiring Manager; Megan Sherman - Interviewer | 48h |  |
| 15 | 1.1.2.6 | Select final candidates based on interview results |  | 1d | 2019-08-19 | 2019-08-19 | 14 |  |  | 2019-08-19 | 2019-08-19 | 1d | 0d |  | Mu Zheng - Hiring Manager | 8h |  |
| 16 | 1.1.2.7 | Interview phase complete | milestone | 0d | 2019-08-19 | 2019-08-19 | 15 |  |  | 2019-08-19 | 2019-08-19 | 0d | 0d |  |  |  |  |
| 17 | 1.1.3 | **Candidate Selection Phase** |  | 7d | 2019-08-19 | 2019-08-28 |  |  |  | 2019-08-19 | 2019-08-28 | 7d | 0d |  |  | 120h |  |
| 18 | 1.1.3.1 | Begin candidate selection phase | milestone | 0d | 2019-08-19 | 2019-08-19 | 16 |  |  | 2019-08-19 | 2019-08-19 | 0d | 0d |  |  |  |  |
| 19 | 1.1.3.2 | Review final candidates |  | 1d | 2019-08-20 | 2019-08-20 | 18 |  |  | 2019-08-20 | 2019-08-20 | 1d | 0d |  | Keith Harris - HR Manager; Mu Zheng - Hiring Manager | 16h |  |
| 20 | 1.1.3.3 | Conduct final interviews |  | 3d | 2019-08-21 | 2019-08-23 | 19 |  |  | 2019-08-21 | 2019-08-23 | 3d | 0d |  | Keith Harris - HR Manager; Mu Zheng - Hiring Manager; Megan Sherman - Interviewer | 72h |  |
| 21 | 1.1.3.4 | Select best candidate |  | 1d | 2019-08-26 | 2019-08-26 | 20 |  |  | 2019-08-26 | 2019-08-26 | 1d | 0d |  | Mu Zheng - Hiring Manager | 8h |  |
| 22 | 1.1.3.5 | Review selection process to assure conformance to HR regulations |  | 1d | 2019-08-27 | 2019-08-27 | 21 |  |  | 2019-08-27 | 2019-08-27 | 1d | 0d |  | Mu Zheng - Hiring Manager; Keith Harris - HR Manager | 16h |  |
| 23 | 1.1.3.6 | Complete documentation |  | 1d | 2019-08-28 | 2019-08-28 | 22 |  |  | 2019-08-28 | 2019-08-28 | 1d | 0d |  | Mu Zheng - Hiring Manager | 8h |  |
| 24 | 1.1.3.7 | Candidate selection phase complete | milestone | 0d | 2019-08-28 | 2019-08-28 | 23 |  |  | 2019-08-28 | 2019-08-28 | 0d | 0d |  |  |  |  |

Notes:
- 11: Selection process must adhere to company guidelines and Equal Employment Opportunity Committee (EEOC) guidelines.
- 15: Selection process must adhere to company guidelines and Equal Employment Opportunity Committee (EEOC) guidelines.
- 20: Selection process must adhere to company guidelines and Equal Employment Opportunity Committee (EEOC) guidelines.

| ID | WBS | Task | Type | Duration | Start | Finish | Predecessors | Baseline start | Baseline finish | Baseline duration | Total slack | Resources | Work |
| --- | --- | --- | --- | --- | --- | --- | --- | --- | --- | --- | --- | --- | --- |
| 25 | 1.1.4 | **Hiring Phase** |  | 8d | 2019-08-28 | 2019-09-09 |  | 2019-08-28 | 2019-09-09 | 8d | 0d |  | 296h |
| 26 | 1.1.4.1 | Begin hiring phase | milestone | 0d | 2019-08-28 | 2019-08-28 | 24 | 2019-08-28 | 2019-08-28 | 0d | 0d |  |  |
| 27 | 1.1.4.2 | Create offer letter |  | 1d | 2019-08-29 | 2019-08-29 | 26 | 2019-08-29 | 2019-08-29 | 1d | 0d | Keith Harris - HR Manager | 8h |
| 28 | 1.1.4.3 | Negotiate salary |  | 5ed | 2019-08-29 | 2019-09-03 | 27 | 2019-08-29 | 2019-09-03 | 5ed | 1.88d | Keith Harris - HR Manager; Mu Zheng - Hiring Manager | 240h |
| 29 | 1.1.4.4 | Offer accepted |  | 1d | 2019-09-04 | 2019-09-04 | 28 | 2019-09-04 | 2019-09-04 | 1d | 0d |  |  |
| 30 | 1.1.4.5 | Conduct employee orientation |  | 3d | 2019-09-05 | 2019-09-09 | 29 | 2019-09-05 | 2019-09-09 | 3d | 0d | Mu Zheng - Hiring Manager; Keith Harris - HR Manager | 48h |
| 31 | 1.1.4.6 | Hiring phase complete | milestone | 0d | 2019-09-09 | 2019-09-09 | 30 | 2019-09-09 | 2019-09-09 | 0d | 0d |  |  |
| 32 | 1.1.5 | Interview Process Complete | milestone | 0d | 2019-09-09 | 2019-09-09 | 31 | 2019-09-09 | 2019-09-09 | 0d | 0d |  |  |

Notes:
- 28: Salaries must be commensurate with skills and job grade and in compliance with all company and Equal Employment Opportunity Committee (EEOC) guidelines.
- 30: Employee orientation includes gathering all required information and introducing employee to company policies.
