# Tailspin Remote Drone

Schedule from MS Project, 2019-01-07 to 2019-06-24, status date 2019-05-17, costs in $, A marks actual dates.
Tailspin Toys

## Calendars

- Standard: Mon-Fri 08:00-12:00, 13:00-17:00; Sat-Sun off. Exceptions (off unless hours are given): 2019-01-21 to 2021-01-18 (Martin Luther King Jr. Day , recurring), 2019-05-27 to 2021-05-31 (Memorial Day, recurring).
- Survey Calendar: Mon-Sat 10:00-14:00, 15:00-19:00; Sun off. Exceptions (off unless hours are given): 2019-01-21 to 2021-01-18 (Martin Luther King Jr. Day , recurring), 2019-05-27 to 2021-05-31 (Memorial Day, recurring).

## Resources

| Resource | Group | Unit | Rate | Cost per use | Notes |
| --- | --- | --- | --- | --- | --- |
| Jamie Reding | Engineering |  | 37.5 |  | Jamie on vacation Jan 14 and 15; available for consult at home if necessary |
| Scott Seely | Marketing |  | 22.5 |  |  |
| Jeff Pike | Marketing |  | 25 |  |  |
| Judy Lew | Management |  | 29.5 |  |  |
| Brenda Diaz | Admininstrative |  | 19.75 |  |  |
| Brad Sutton | Marketing |  | 16.5 |  |  |
| Annette Hill | Administrative |  | 20 |  |  |
| Ryan Ihrig | Marketing |  | 16 |  |  |
| Yan Li |  |  | 28.5 |  |  |
| Model technician | Manufacturing |  | 16.5 |  |  |
| Digital camera | Equipment |  | 7.5 | 20 |  |
| Anemometer | Equipment |  | 0.5 |  |  |
| Safety tether | Equipment |  | 0.12 |  |  |
| Clipboards | Supplies |  |  |  |  |
| Large Conference Room | Facilities |  |  | 30 |  |
| Small Conference Room | Facilities |  |  | 25 |  |
| SD Card | Equipment | 4 GB | 12 |  |  |
| Printer paper | Supplies | Ream | 4 |  |  |
| Travel | Cost |  |  |  |  |
| Food | Cost |  |  |  |  |
| Bottled water | Supplies | case | 5 |  |  |
| Pens | Supplies | 12 count box | 3 |  |  |
| Survey Team Member | Marketing |  | 15 |  |  |
| Shu Ito | HR |  | 35 |  |  |
| Maria Hammond | Quality |  | 27.5 |  |  |
| Jim Kim | Quality |  | 28 |  |  |
| Bjorn Rettig | Engineering |  | 35 |  |  |
| Florian Voss | PMO |  | 37.5 |  |  |
| Jane Clayton | Manufacturing |  | 42.5 |  |  |
| Greg Guzik | Manufacturing |  | 32 |  |  |
| David Barber | Engineering |  | 43.75 |  |  |
| Eva Corets | Administrative |  | 15 |  |  |
| Frank Zhang | Management |  | 50 |  |  |
| Testing Field | Facilities |  |  | 100 |  |

## Schedule

| ID | WBS | Task | Type | Duration | Start | Finish | Predecessors | Complete | Baseline start | Baseline finish | Baseline duration | Constraint | Deadline | Calendar | Resources | Work | Actual work | Cost | Baseline cost | Actual cost |
| --- | --- | --- | --- | --- | --- | --- | --- | --- | --- | --- | --- | --- | --- | --- | --- | --- | --- | --- | --- | --- |
| 1 | 1 | **Target Market Research and Analysis** |  | 31.25d | 2019-01-07 08:00 A | 2019-02-20 10:00 A |  | 100% | 2019-01-07 08:00 | 2019-02-18 14:00 | 29.62d |  |  |  |  | 698.74h | 698.74h | 19,601.3 | 18,033.8 | 17,351.3 |
| 2 | 1.1 | **Research** |  | 29.75d | 2019-01-07 08:00 A | 2019-02-18 15:00 A |  | 100% | 2019-01-07 08:00 | 2019-02-18 14:00 | 29.62d |  |  |  |  | 402.14h | 402.14h | 11,617.8 | 11,331.55 | 9,367.8 |
| 3 | 1.1.1 | Research begins | milestone | 0d | 2019-01-07 08:00 A | 2019-01-07 08:00 A |  | 100% | 2019-01-07 08:00 | 2019-01-07 08:00 | 0d |  |  |  |  |  |  |  |  |  |
| 4 | 1.1.2 | **Surveys** |  | 8d | 2019-01-07 08:00 A | 2019-01-16 19:00 A |  | 100% | 2019-01-07 08:00 | 2019-01-16 19:00 | 8d |  |  |  |  | 126.14h | 126.14h | 2,742.3 | 2,742.3 | 2,742.3 |
| 5 | 1.1.2.1 | Develop survey questionnaire |  | 2.24d | 2019-01-07 08:00 A | 2019-01-08 16:56 A | 3 | 100% | 2019-01-07 08:00 | 2019-01-08 16:56 | 2.24d |  |  |  | Scott Seely; Jeff Pike; Annette Hill [50%]; Brad Sutton | 48h | 48h | 1,003.73 | 1,003.73 | 1,003.73 |
| 6 | 1.1.2.2 | Review and approval of survey |  | 1h | 2019-01-08 16:56 A | 2019-01-09 08:56 A | 5 | 100% | 2019-01-08 16:56 | 2019-01-09 08:56 | 1h |  |  |  | Jeff Pike | 1h | 1h | 25 | 25 | 25 |
| 7 | 1.1.2.3 | Conduct survey |  | 1.2w | 2019-01-09 10:00 A | 2019-01-16 19:00 A | 6 | 100% | 2019-01-09 10:00 | 2019-01-16 19:00 | 1.2w |  |  | Survey Calendar | Judy Lew [50%]; Scott Seely [57.1%]; Annette Hill [28.6%]; Ryan Ihrig [57.1%]; Bottled water [0.06 case] | 77.14h | 77.14h | 1,713.57 | 1,713.57 | 1,713.57 |
| 8 | 1.1.3 | **Focus Groups** |  | 11.88d | 2019-01-09 08:56 A | 2019-01-25 17:00 A |  | 100% | 2019-01-09 08:56 | 2019-01-25 17:00 | 11.88d |  |  |  |  | 144h | 144h | 3,228 | 3,228 | 2,728 |
| 9 | 1.1.3.1 | Identify focus group member demographics |  | 1d | 2019-01-09 08:56 A | 2019-01-10 08:56 A | 6 | 100% | 2019-01-09 08:56 | 2019-01-10 08:56 | 1d |  | 2019-01-10 17:00 |  | Jeff Pike; Yan Li; Brenda Diaz | 24h | 24h | 478 | 478 | 478 |
| 10 | 1.1.3.2 | Contact potential focus group members |  | 5.12d | 2019-01-10 08:56 A | 2019-01-17 09:56 A | 9 | 100% | 2019-01-10 08:56 | 2019-01-17 09:56 | 5.12d |  |  |  | Survey Team Member; Brad Sutton | 80h | 80h | 1,260 | 1,260 | 1,260 |
| 11 | 1.1.3.3 | Conduct focus groups |  | 1w | 2019-01-14 08:00 A | 2019-01-25 17:00 A | 10 | 100% | 2019-01-14 08:00 | 2019-01-25 17:00 | 1w | start no later than 2019-01-14 08:00 |  |  | Food [0.1%]; Judy Lew [50%]; Annette Hill [50%] | 40h | 40h | 1,490 | 1,490 | 990 |
| 12 | 1.1.4 | **Observations** |  | 15.75d | 2019-01-28 08:00 A | 2019-02-18 15:00 A |  | 100% | 2019-01-28 08:00 | 2019-02-18 14:00 | 15.62d |  |  |  |  | 132h | 132h | 5,647.5 | 5,361.25 | 3,897.5 |
| 13 | 1.1.4.1 | Identify observation parameters |  | 4h | 2019-01-28 08:00 A | 2019-01-28 12:00 A | 11 | 100% | 2019-01-28 08:00 | 2019-01-28 12:00 | 4h |  |  |  | Brenda Diaz; Brad Sutton | 8h | 8h | 145 | 145 | 145 |
| 14 | 1.1.4.2 | Select observation locations |  | 2h | 2019-01-28 13:00 A | 2019-01-28 15:00 A | 13 | 100% | 2019-01-28 13:00 | 2019-01-28 14:00 | 1h |  |  |  | Brad Sutton; Brenda Diaz | 4h | 4h | 72.5 | 36.25 | 72.5 |
| 15 | 1.1.4.3 | Conduct observations |  | 3w | 2019-01-28 15:00 A | 2019-02-18 15:00 A | 14 | 100% | 2019-01-28 14:00 | 2019-02-18 14:00 | 3w |  |  |  | Food [0.1%]; Jamie Reding [50%]; Jeff Pike [50%]; Judy Lew [50%]; Travel [0.2%] | 120h | 120h | 5,430 | 5,180 | 3,680 |
| 16 | 1.1.5 | Research complete | milestone | 0d | 2019-02-18 15:00 A | 2019-02-18 15:00 A | 15 | 100% | 2019-02-18 14:00 | 2019-02-18 14:00 | 0d |  |  |  |  |  |  |  |  |  |
| 17 | 1.2 | **Analysis** |  | 16.5d | 2019-01-28 15:00 A | 2019-02-20 10:00 A |  | 100% | 2019-01-28 14:00 | 2019-02-15 11:00 | 13.75d |  |  |  |  | 296.6h | 296.6h | 7,983.5 | 6,702.25 | 7,983.5 |
| 18 | 1.2.1 | Analysis begins | milestone | 0d | 2019-01-28 15:00 A | 2019-01-28 15:00 A | 15SS | 100% | 2019-01-28 14:00 | 2019-01-28 14:00 | 0d |  |  |  |  |  |  |  |  |  |
| 19 | 1.2.2 | **Analysis of Research Data** |  | 10.5d | 2019-01-28 15:00 A | 2019-02-12 10:00 A |  | 100% | 2019-01-28 14:00 | 2019-02-07 11:00 | 7.75d |  |  |  |  | 198.6h | 198.6h | 5,408.5 | 4,285.25 | 5,408.5 |
| 20 | 1.2.2.1 | Analyze surveys, focus groups, and observations |  | 3d | 2019-01-28 15:00 A | 2019-01-31 10:00 A | 18 | 100% | 2019-01-28 14:00 | 2019-01-30 10:00 | 2.12d |  |  |  | Jamie Reding; David Barber; Scott Seely; Ryan Ihrig | 75.6h | 75.6h | 2,296 | 1,615.25 | 2,296 |
| 21 | 1.2.2.2 | Create follow up actions for secondary research |  | 1d | 2019-01-31 10:00 A | 2019-02-01 10:00 A | 20 | 100% | 2019-01-30 10:00 | 2019-01-31 10:00 | 1d |  |  |  | Annette Hill [50%]; Brenda Diaz; Brad Sutton; Eva Corets | 28h | 28h | 490 | 490 | 490 |
| 22 | 1.2.2.3 | Conduct secondary research |  | 7d | 2019-02-01 10:00 A | 2019-02-12 10:00 A | 21 | 100% | 2019-01-31 10:00 | 2019-02-07 11:00 | 1.02w |  |  |  | Jeff Pike; Judy Lew | 95h | 95h | 2,622.5 | 2,180 | 2,622.5 |
| 23 | 1.2.3 | **Report of Research Findings** |  | 8d | 2019-02-08 10:00 A | 2019-02-20 10:00 A |  | 100% | 2019-02-06 11:00 | 2019-02-15 11:00 | 7d |  |  |  |  | 98h | 98h | 2,575 | 2,417 | 2,575 |
| 24 | 1.2.3.1 | Compile draft copy of report |  | 16h | 2019-02-08 10:00 A | 2019-02-12 10:00 A | 22FF | 100% | 2019-02-06 11:00 | 2019-02-07 11:00 | 8h |  |  |  | Brenda Diaz | 16h | 16h | 316 | 158 | 316 |
| 25 | 1.2.3.2 | Draft copy review period |  | 5d | 2019-02-12 10:00 A | 2019-02-19 10:00 A | 24 | 100% | 2019-02-07 11:00 | 2019-02-14 11:00 | 5d |  |  |  | Bjorn Rettig [50%]; Brad Sutton [75%] | 50h | 50h | 1,195 | 1,195 | 1,195 |
| 26 | 1.2.3.3 | Review comments and compile final report |  | 1d | 2019-02-19 10:00 A | 2019-02-20 10:00 A | 25 | 100% | 2019-02-14 11:00 | 2019-02-15 11:00 | 1d |  |  |  | Brenda Diaz; David Barber; Jamie Reding; Greg Guzik | 32h | 32h | 1,064 | 1,064 | 1,064 |
| 27 | 1.2.4 | Analysis complete | milestone | 0d | 2019-02-20 10:00 A | 2019-02-20 10:00 A | 26 | 100% | 2019-02-15 11:00 | 2019-02-15 11:00 | 0d |  | 2019-02-22 17:00 |  |  |  |  |  |  |  |

Notes:
- 7: Contact Mark Hanson in Marketing for additional resource support.

| ID | WBS | Task | Type | Duration | Start | Finish | Predecessors | Complete | Remaining | Baseline start | Baseline finish | Baseline duration | Total slack | Constraint | Deadline | Resources | Work | Actual work | Cost | Baseline cost | Actual cost |
| --- | --- | --- | --- | --- | --- | --- | --- | --- | --- | --- | --- | --- | --- | --- | --- | --- | --- | --- | --- | --- | --- |
| 28 | 2 | **Design** |  | 24.75d | 2019-02-20 10:00 A | 2019-03-26 17:00 A |  | 100% |  | 2019-02-15 11:00 | 2019-03-07 16:00 | 14.5d |  |  | 2019-03-08 17:00 |  | 440h | 440h | 10,900 | 8,991 | 10,900 |
| 29 | 2.1 | Design begins | milestone | 0d | 2019-02-20 10:00 A | 2019-02-20 10:00 A | 27 | 100% |  | 2019-02-15 11:00 | 2019-02-15 11:00 | 0d |  |  |  |  |  |  |  |  |  |
| 30 | 2.2 | Research Findings Evaluation |  | 3d | 2019-02-20 10:00 A | 2019-02-25 12:00 A | 29 | 100% |  | 2019-02-15 11:00 | 2019-02-19 14:00 | 2d |  |  |  | Jamie Reding; Judy Lew; Maria Hammond; David Barber | 40h | 40h | 1,342 | 1,106 | 1,342 |
| 31 | 2.3 | Design Document |  | 2d | 2019-02-25 13:00 A | 2019-03-12 12:00 A | 30 | 100% |  | 2019-02-19 14:00 | 2019-02-21 14:00 | 2d |  |  |  | Jamie Reding; Brenda Diaz | 32h | 32h | 916 | 916 | 916 |
| 32 | 2.4 | Proof of Concept |  | 2w | 2019-03-11 08:00 A | 2019-03-22 17:00 A | 31 | 100% |  | 2019-02-21 14:00 | 2019-03-07 14:00 | 2w |  | start no earlier than 2019-03-08 17:00 |  | Model technician; Maria Hammond; Greg Guzik; SD Card [0.03 4 GB]; Digital camera | 320h | 320h | 6,730 | 6,730 | 6,730 |
| 33 | 2.5 | Final Design Selection |  | 2d | 2019-03-25 08:00 A | 2019-03-26 17:00 A | 32 | 100% |  | 2019-03-07 14:00 | 2019-03-07 16:00 | 2h |  |  |  | Frank Zhang; Greg Guzik; Jamie Reding | 48h | 48h | 1,912 | 239 | 1,912 |
| 34 | 2.6 | Design complete | milestone | 0d | 2019-03-26 17:00 A | 2019-03-26 17:00 A | 33 | 100% |  | 2019-03-07 16:00 | 2019-03-07 16:00 | 0d |  |  |  |  |  |  |  |  |  |
| 35 | 3 | **Product Development** |  | 36d | 2019-03-26 17:00 A | 2019-05-15 17:00 A |  | 100% |  | 2019-03-07 16:00 | 2019-04-16 11:00 | 27.5d |  |  |  |  | 1124h | 1124h | 25,236 | 18,622 | 25,236 |
| 36 | 3.1 | Product development begins | milestone | 0d | 2019-03-26 17:00 A | 2019-03-26 17:00 A | 34 | 100% |  | 2019-03-07 16:00 | 2019-03-07 16:00 | 0d |  |  |  |  |  |  |  |  |  |
| 37 | 3.2 | Initial Prototype |  | 12d | 2019-03-27 08:00 A | 2019-04-11 17:00 A | 36 | 100% |  | 2019-03-07 16:00 | 2019-03-14 17:00 | 1.02w |  |  |  | Model technician [200%]; Jamie Reding; Jane Clayton | 232h | 232h | 8,340 | 3,860 | 8,340 |
| 38 | 3.3 | Internal Testing |  | 14d | 2019-04-12 08:00 A | 2019-05-01 17:00 A | 37 | 100% |  | 2019-03-18 08:00 | 2019-03-29 17:00 | 2w |  | start no earlier than 2019-03-18 08:00 |  | Maria Hammond; Jim Kim; Model technician; Jamie Reding [25%]; Testing Field; SD Card [1 4 GB]; Digital camera | 588h | 588h | 10,086 | 7,242 | 10,086 |
| 39 | 3.4 | Raw Materials List |  | 8h | 2019-05-02 08:00 A | 2019-05-02 17:00 A | 38 | 100% |  | 2019-04-01 08:00 | 2019-04-02 09:00 | 9h |  |  |  | Jamie Reding; Eva Corets | 16h | 16h | 420 | 420 | 420 |
| 40 | 3.5 | Parts Designation |  | 1.8w | 2019-05-03 08:00 A | 2019-05-15 17:00 A | 39 | 100% |  | 2019-04-02 09:00 | 2019-04-16 11:00 | 2.05w |  |  |  | Eva Corets; Jamie Reding; Brad Sutton; Brenda Diaz | 288h | 288h | 6,390 | 7,100 | 6,390 |
| 41 | 3.6 | Product development complete | milestone | 0d | 2019-05-15 17:00 A | 2019-05-15 17:00 A | 40 | 100% |  | 2019-04-16 11:00 | 2019-04-16 11:00 | 0d |  |  | 2019-05-17 17:00 |  |  |  |  |  |  |
| 42 | 4 | **Production Planning** |  | 9.12d | 2019-05-15 17:00 A | 2019-05-30 09:00 |  | 41% | 5.38d | 2019-04-16 11:00 | 2019-04-29 15:00 | 9.38d | 0d |  |  |  | 374h | 180h | 10,842 | 11,001 | 4,770 |
| 43 | 4.1 | Production planning begins | milestone | 0d | 2019-05-15 17:00 A | 2019-05-15 17:00 A | 41 | 100% |  | 2019-04-16 11:00 | 2019-04-16 11:00 | 0d |  |  |  |  |  |  |  |  |  |
| 44 | 4.2 | High-level Production Plan |  | 4.88d | 2019-05-16 08:00 A | 2019-05-22 16:00 | 43 | 77% | 1.12d | 2019-04-16 11:00 | 2019-04-23 12:00 | 5.12d | 0d |  |  | Bjorn Rettig; Eva Corets; Frank Zhang; Jane Clayton; Large Conference Room; Model technician | 234h | 180h | 6,231 | 6,390 | 4,770 |
| 45 | 4.3 | Resource Planning |  | 3d | 2019-05-22 16:00 | 2019-05-28 16:00 | 44 |  |  | 2019-04-23 13:00 | 2019-04-26 12:00 | 3d | 0d |  |  | Judy Lew; Frank Zhang; Jamie Reding; Eva Corets; Bjorn Rettig | 120h |  | 4,008 | 4,008 |  |
| 46 | 4.4 | Quality Control Design |  | 1d | 2019-05-28 16:00 | 2019-05-29 16:00 | 45 |  |  | 2019-04-26 13:00 | 2019-04-29 12:00 | 1d | 0d |  |  | Maria Hammond; Jim Kim | 16h |  | 444 | 444 |  |
| 47 | 4.5 | Final Production Plan Approval |  | 2h | 2019-05-29 16:00 | 2019-05-30 09:00 | 46 |  |  | 2019-04-29 13:00 | 2019-04-29 15:00 | 2h | 0d |  |  | Judy Lew; Frank Zhang | 4h |  | 159 | 159 |  |
| 48 | 4.6 | Production planning complete | milestone | 0d | 2019-05-30 09:00 | 2019-05-30 09:00 | 47 |  |  | 2019-04-29 15:00 | 2019-04-29 15:00 | 0d | 0d |  | 2019-05-31 17:00 |  |  |  |  |  |  |
| 49 | 5 | **Marketing** |  | 16.93d | 2019-05-30 09:00 | 2019-06-24 08:24 |  |  |  | 2019-04-29 15:00 | 2019-05-23 08:24 | 17.3d | 0d |  |  |  | 646.8h |  | 13,902.25 | 13,902.25 |  |
| 50 | 5.1 | Marketing phase begins | milestone | 0d | 2019-05-30 09:00 | 2019-05-30 09:00 | 48 |  |  | 2019-04-29 15:00 | 2019-04-29 15:00 | 0d | 0d |  |  |  |  |  |  |  |  |
| 51 | 5.2 | Marketing Strategy Development |  | 1.05d | 2019-05-30 09:00 | 2019-05-31 08:24 | 50 |  |  | 2019-04-29 15:00 | 2019-04-30 14:24 | 1.18d | 0d |  |  | Scott Seely; Brad Sutton; Brenda Diaz | 22.8h |  | 448.25 | 448.25 |  |
| 52 | 5.3 | Marketing Plan Development and Approval |  | 1d | 2019-05-31 08:24 | 2019-06-03 08:24 | 51 |  |  | 2019-04-30 14:24 | 2019-05-01 14:24 | 1d | 0d |  |  | Frank Zhang; Judy Lew; Ryan Ihrig | 24h |  | 764 | 764 |  |
| 53 | 5.4 | Marketing Materials |  | 3w | 2019-06-03 08:24 | 2019-06-24 08:24 | 52 |  |  | 2019-05-01 14:24 | 2019-05-23 08:24 | 3.08w | 0d |  |  | Jeff Pike; Brenda Diaz; Brad Sutton; Ryan Ihrig; Yan Li | 600h |  | 12,690 | 12,690 |  |
| 54 | 5.5 | Marketing phase complete | milestone | 0d | 2019-06-24 08:24 | 2019-06-24 08:24 | 53 |  |  | 2019-05-23 08:24 | 2019-05-23 08:24 | 0d | 0d |  | 2019-06-28 17:00 |  |  |  |  |  |  |

Notes:
- 31: Task was delayed after work began due to FAA rules release on March 8, 2019. Successive deadlines were adjusted for this delay - Per Sponsor.

| ID | WBS | Task | Duration | Start | Finish | Complete | Remaining | Baseline start | Baseline finish | Baseline duration | Total slack | Constraint | Resources | Work | Actual work | Cost | Baseline cost | Actual cost |
| --- | --- | --- | --- | --- | --- | --- | --- | --- | --- | --- | --- | --- | --- | --- | --- | --- | --- | --- |
| 55 | 6 | **Project Management** | 94.12d | 2019-01-07 08:00 A | 2019-05-20 09:00 | 40% | 56.48d | 2019-01-07 08:00 | 2019-05-20 09:00 | 94.12d | 23.93d |  |  | 65h | 40h | 1,833 | 2,820 | 1,128 |
| 56 | 6.1 | **Status Meeting** | 94.12d | 2019-01-07 08:00 A | 2019-05-20 09:00 | 40% | 56.48d | 2019-01-07 08:00 | 2019-05-20 09:00 | 94.12d | 23.93d |  |  | 65h | 40h | 1,833 | 2,820 | 1,128 |
| 57 | 6.1.1 | Status Meeting 1 | 1h | 2019-01-07 08:00 A | 2019-01-07 09:00 A | 100% |  | 2019-01-07 08:00 | 2019-01-07 09:00 | 1h |  | start no earlier than 2019-01-07 08:00 | Brad Sutton; Eva Corets; Jane Clayton; Judy Lew; Florian Voss | 5h | 5h | 141 | 141 | 141 |
| 58 | 6.1.2 | Status Meeting 2 | 1h | 2019-01-14 08:00 A | 2019-01-14 09:00 A | 100% |  | 2019-01-14 08:00 | 2019-01-14 09:00 | 1h |  | start no earlier than 2019-01-14 08:00 | Brad Sutton; Eva Corets; Jane Clayton; Judy Lew; Florian Voss | 5h | 5h | 141 | 141 | 141 |
| 59 | 6.1.3 | Status Meeting 3 | 1h | 2019-01-22 08:00 A | 2019-01-22 09:00 A | 100% |  | 2019-01-22 08:00 | 2019-01-22 09:00 | 1h |  | start no earlier than 2019-01-21 08:00 | Brad Sutton; Eva Corets; Jane Clayton; Judy Lew; Florian Voss | 5h | 5h | 141 | 141 | 141 |
| 60 | 6.1.4 | Status Meeting 4 | 1h | 2019-01-28 08:00 A | 2019-01-28 09:00 A | 100% |  | 2019-03-18 08:00 | 2019-03-18 09:00 | 1h |  | start no earlier than 2019-01-28 08:00 | Brad Sutton; Eva Corets; Jane Clayton; Judy Lew; Florian Voss | 5h | 5h | 141 | 141 | 141 |
| 61 | 6.1.5 | Status Meeting 5 | 1h | 2019-02-04 08:00 A | 2019-02-04 09:00 A | 100% |  | 2019-03-25 08:00 | 2019-03-25 09:00 | 1h |  | start no earlier than 2019-02-04 08:00 | Brad Sutton; Eva Corets; Jane Clayton; Judy Lew; Florian Voss | 5h | 5h | 141 | 141 | 141 |
| 62 | 6.1.6 | Status Meeting 6 | 1h | 2019-02-11 08:00 A | 2019-02-11 09:00 A | 100% |  | 2019-04-01 08:00 | 2019-04-01 09:00 | 1h |  | start no earlier than 2019-02-11 08:00 | Brad Sutton; Eva Corets; Jane Clayton; Judy Lew; Florian Voss | 5h | 5h | 141 | 141 | 141 |
| 63 | 6.1.7 | Status Meeting 7 | 1h | 2019-02-18 08:00 A | 2019-02-18 09:00 A | 100% |  | 2019-04-08 08:00 | 2019-04-08 09:00 | 1h |  | start no earlier than 2019-02-18 08:00 | Brad Sutton; Eva Corets; Jane Clayton; Judy Lew; Florian Voss | 5h | 5h | 141 | 141 | 141 |
| 64 | 6.1.8 | Status Meeting 8 | 1h | 2019-02-25 08:00 A | 2019-02-25 09:00 A | 100% |  | 2019-04-15 08:00 | 2019-04-15 09:00 | 1h |  | start no earlier than 2019-02-25 08:00 | Brad Sutton; Eva Corets; Jane Clayton; Judy Lew; Florian Voss | 5h | 5h | 141 | 141 | 141 |
| 65 | 6.1.9 | Status Meeting 9 | 1h | 2019-03-04 08:00 | 2019-03-04 09:00 |  |  | 2019-04-22 08:00 | 2019-04-22 09:00 | 1h | 78.92d | start no earlier than 2019-03-04 08:00 | Brad Sutton; Eva Corets; Jane Clayton; Judy Lew; Florian Voss | 5h |  | 141 | 141 |  |
| 66 | 6.1.10 | Status Meeting 10 | 1h | 2019-03-11 08:00 | 2019-03-11 09:00 |  |  | 2019-04-29 08:00 | 2019-04-29 09:00 | 1h | 73.92d | start no earlier than 2019-03-11 08:00 | Brad Sutton; Eva Corets; Jane Clayton; Judy Lew; Florian Voss | 5h |  | 141 | 141 |  |
| 67 | 6.1.11 | Status Meeting 11 | 1h | 2019-03-18 08:00 | 2019-03-18 09:00 |  |  | 2019-05-06 08:00 | 2019-05-06 09:00 | 1h | 68.92d | start no earlier than 2019-03-18 08:00 | Brad Sutton; Eva Corets; Jane Clayton; Judy Lew; Florian Voss | 5h |  | 141 | 141 |  |
| 68 | 6.1.12 | Status Meeting 12 | 1h | 2019-03-25 08:00 | 2019-03-25 09:00 |  |  | 2019-05-13 08:00 | 2019-05-13 09:00 | 1h | 63.92d | start no earlier than 2019-03-25 08:00 | Brad Sutton; Eva Corets; Jane Clayton; Judy Lew; Florian Voss | 5h |  | 141 | 141 |  |
| 69 | 6.1.13 | Status Meeting 13 | 1h | 2019-04-01 08:00 | 2019-04-01 09:00 |  |  | 2019-05-20 08:00 | 2019-05-20 09:00 | 1h | 58.92d | start no earlier than 2019-04-01 08:00 | Brad Sutton; Eva Corets; Jane Clayton; Judy Lew; Florian Voss | 5h |  | 141 | 141 |  |
| 70 | 6.1.14 | Status Meeting 14 | 1h | 2019-04-08 08:00 | 2019-04-08 09:00 |  |  |  |  |  | 53.92d | start no earlier than 2019-04-08 08:00 |  |  |  |  |  |  |
| 71 | 6.1.15 | Status Meeting 15 | 1h | 2019-04-15 08:00 | 2019-04-15 09:00 |  |  |  |  |  | 48.92d | start no earlier than 2019-04-15 08:00 |  |  |  |  |  |  |
| 72 | 6.1.16 | Status Meeting 16 | 1h | 2019-04-22 08:00 | 2019-04-22 09:00 |  |  |  |  |  | 43.92d | start no earlier than 2019-04-22 08:00 |  |  |  |  |  |  |
| 73 | 6.1.17 | Status Meeting 17 | 1h | 2019-04-29 08:00 | 2019-04-29 09:00 |  |  |  |  |  | 38.92d | start no earlier than 2019-04-29 08:00 |  |  |  |  |  |  |
| 74 | 6.1.18 | Status Meeting 18 | 1h | 2019-05-06 08:00 | 2019-05-06 09:00 |  |  |  |  |  | 33.92d | start no earlier than 2019-05-06 08:00 |  |  |  |  |  |  |
| 75 | 6.1.19 | Status Meeting 19 | 1h | 2019-05-13 08:00 | 2019-05-13 09:00 |  |  |  |  |  | 28.93d | start no earlier than 2019-05-13 08:00 |  |  |  |  |  |  |
| 76 | 6.1.20 | Status Meeting 20 | 1h | 2019-05-20 08:00 | 2019-05-20 09:00 |  |  |  |  |  | 23.93d | start no earlier than 2019-05-20 08:00 |  |  |  |  |  |  |
